# Opte+ App - Acelera

Schedule from MS Project XML, 2019-05-02 to 2019-08-05, A marks actual dates.

## Calendars

- Standard: Mon-Fri 08:00-12:00, 13:00-17:00; Sat-Sun off.

## Resources

| Resource |
| --- |
| Dirceu Belém |
| Guilherme Miari |
| Kassio Luz |
| Flávio Machado |
| Lucas Moreira |
| Isabela Oliveira |
| Marcus Melo |

## Schedule

| ID | WBS | Task | Duration | Start | Finish | Predecessors | Remaining | Total slack | Resources | Work |
| --- | --- | --- | --- | --- | --- | --- | --- | --- | --- | --- |
| 1 | 1 | **App Opte+** | 67.62d | 2019-05-02 A | 2019-08-05 |  | 67.62d | 0d |  | 758h |
| 2 | 1.1 | **SPRINT 5** | 34.12d | 2019-05-02 A | 2019-06-19 |  | 34.12d | 0d |  | 412h |
| 3 | 1.1.1 | **Back-End** | 14d | 2019-05-02 A | 2019-05-21 |  | 14d | 0d |  | 112h |
| 4 | 1.1.1.1 | Criar Estrutura para Retorno das Informações de Banner | 1d | 2019-05-02 A | 2019-05-02 |  | 1d | 0d | Guilherme Miari | 8h |
| 5 | 1.1.1.2 | Criar Estrutura para Retorno das Informações de Vitrine | 1d | 2019-05-03 A | 2019-05-03 | 4 | 1d | 0d | Guilherme Miari | 8h |
| 6 | 1.1.1.3 | Criar Estrutura para Retorno das Informações de Departamentos/Categorias/SubCategorias | 1d | 2019-05-06 A | 2019-05-06 | 5 | 1d | 0d | Guilherme Miari | 8h |
| 7 | 1.1.1.4 | Criar Estrutura para Retorno das Informações de Gateway | 1d | 2019-05-07 A | 2019-05-07 | 6 | 1d | 0d | Guilherme Miari | 8h |
| 8 | 1.1.1.5 | Criar Estrutura para Retorno das Informações de Produto | 1d | 2019-05-08 A | 2019-05-08 | 7 | 1d | 0d | Guilherme Miari | 8h |
| 9 | 1.1.1.6 | Criar Estrutura para Retorno e Gerenciamento do Carrinho Produto | 4d | 2019-05-09 A | 2019-05-14 | 8 | 4d | 0d | Guilherme Miari | 32h |
| 10 | 1.1.1.7 | Criar Estrutura para Serviço de Configurações | 1d | 2019-05-15 A | 2019-05-15 | 9 | 1d | 0d | Guilherme Miari | 8h |
| 11 | 1.1.1.8 | Criar Gerenciador de Forma de Pagamento | 2d | 2019-05-16 A | 2019-05-17 | 10 | 2d | 0d | Guilherme Miari | 16h |
| 12 | 1.1.1.9 | Criar Gerenciador de Módulo Pagador | 2d | 2019-05-20 A | 2019-05-21 | 11 | 2d | 0d | Guilherme Miari | 16h |
| 13 | 1.1.2 | **Front-End** | 28d | 2019-05-03 A | 2019-06-11 |  | 28d | 0d |  | 224h |
| 14 | 1.1.2.1 | Criar Tela Principal App (Produtos/Moda) | 2d | 2019-05-03 A | 2019-05-06 | 4 | 2d | 0d | Dirceu Belém | 16h |
| 15 | 1.1.2.2 | Criar Tela Vitrine (Produtos/Moda) | 2d | 2019-05-07 A | 2019-05-08 | 14, 5 | 2d | 0d | Dirceu Belém | 16h |
| 16 | 1.1.2.3 | Criar Tela Detalhe Produto | 2d | 2019-05-09 A | 2019-05-10 | 15, 8 | 2d | 0d | Dirceu Belém | 16h |
| 17 | 1.1.2.4 | Criar Estrutura de Filtros do App | 3d | 2019-05-13 A | 2019-05-15 | 16 | 3d | 0d | Dirceu Belém | 24h |
| 18 | 1.1.2.5 | Criar Tela Carrinho (Produtos/Moda) | 7d | 2019-05-16 A | 2019-05-24 | 17, 9 | 7d | 0d | Dirceu Belém | 56h |
| 19 | 1.1.2.6 | Criar Tela Checkout (Produtos/Moda) | 9d | 2019-05-27 A | 2019-06-06 | 18 | 9d | 0d | Dirceu Belém | 72h |
| 20 | 1.1.2.7 | Criar Tela Finalização Resgate | 3d | 2019-06-07 A | 2019-06-11 | 19 | 3d | 0d | Dirceu Belém | 24h |
| 21 | 1.1.3 | **Homologação** | 4.38d | 2019-06-12 A | 2019-06-18 |  | 4.38d | 0d |  | 70h |
| 22 | 1.1.3.1 | **Testes UAT** | 3.5d | 2019-06-12 A | 2019-06-17 |  | 3.5d | 0d |  | 56h |
| 23 | 1.1.3.1.1 | Testar em Smartphone IOS | 14h | 2019-06-12 A | 2019-06-13 | 20 | 14h | 0d | Flávio Machado | 14h |
| 24 | 1.1.3.1.2 | Testar em Smartphone Android | 14h | 2019-06-12 A | 2019-06-13 | 20 | 14h | 0d | Lucas Moreira | 14h |
| 25 | 1.1.3.1.3 | Testar em Tablets IOS | 14h | 2019-06-13 A | 2019-06-17 | 23, 20 | 14h | 0d | Flávio Machado | 14h |
| 26 | 1.1.3.1.4 | Testar em Tablets Android | 14h | 2019-06-13 A | 2019-06-17 | 24, 20 | 14h | 0d | Lucas Moreira | 14h |
| 27 | 1.1.3.2 | Realizar Correções Identificadas no Back-End | 7h | 2019-06-17 A | 2019-06-18 | 22 | 7h | 0d | Guilherme Miari | 7h |
| 28 | 1.1.3.3 | Realizar Correções Identificadas no Front-End | 7h | 2019-06-17 A | 2019-06-18 | 22 | 7h | 0d | Dirceu Belém | 7h |

Notes:
- 17: Nessa atividade precisamos finalizar também: / - Todos os modais de alerta
- 18: Tarefas: / - Adicionar ao carrinho / - Verificar disponibilidade para o CEP / - Alterar quantidade / - Remover do carrinho / - Verificar se o usuário está adicionando passagem para zerar o carrinho
- 19: Nesta atividade também precisamos implementar: / - Login / - Esqueci minha senha / - Lista de Endereços / - Cadastro e Manutenção de Endereços

| ID | WBS | Task | Duration | Start | Finish | Predecessors | Remaining | Total slack | Resources | Work |
| --- | --- | --- | --- | --- | --- | --- | --- | --- | --- | --- |
| 29 | 1.1.4 | **Implantação** | 0.75d | 2019-06-18 A | 2019-06-19 |  | 0.75d | 0d |  | 6h |
| 30 | 1.1.4.1 | **Comitê CSU** | 0.75d | 2019-06-18 A | 2019-06-19 |  | 0.75d | 0d |  | 6h |
| 31 | 1.1.4.1.1 | Agendar Reunião de Comitê de Implantação | 1h | 2019-06-18 A | 2019-06-18 | 28 | 1h | 0d | Isabela Oliveira | 1h |
| 32 | 1.1.4.1.2 | Realizar Reunião com Comitê de Implantação | 4h | 2019-06-18 A | 2019-06-18 | 31 | 4h | 0d | Isabela Oliveira | 4h |
| 33 | 1.1.4.1.3 | Solicitar Aprovações da Implantação | 1h | 2019-06-19 A | 2019-06-19 | 32 | 1h | 0d | Isabela Oliveira | 1h |
| 34 | 1.2 | **SPRINT 6** | 18d | 2019-06-18 A | 2019-07-12 |  | 18d | 0d |  | 216h |
| 35 | 1.2.1 | **Back-End** | 11d | 2019-06-18 A | 2019-07-03 |  | 11d | 0d |  | 88h |
| 36 | 1.2.1.1 | Criar Estrutura para Retorno das Informações Passagens | 4d | 2019-06-18 A | 2019-06-24 | 3, 27 | 4d | 0d | Guilherme Miari | 32h |
| 37 | 1.2.1.2 | Criar Estrutura para Retorno das Informações de Pacotes | 2d | 2019-06-24 A | 2019-06-26 | 36 | 2d | 0d | Guilherme Miari | 16h |
| 38 | 1.2.1.3 | Criar Estrutura para Retorno das Informações de Hoteis | 1d | 2019-06-26 A | 2019-06-27 | 37 | 1d | 0d | Guilherme Miari | 8h |
| 39 | 1.2.1.4 | Criar Estrutura para gerenciamento do carrinho de Viagens | 2d | 2019-06-27 A | 2019-07-01 | 38 | 2d | 0d | Guilherme Miari | 16h |
| 40 | 1.2.1.5 | Criar Estrutura para gerenciamento das informações de transição (Viagens) | 1d | 2019-07-01 A | 2019-07-02 | 39 | 1d | 0d | Guilherme Miari | 8h |
| 41 | 1.2.1.6 | Criar Estrutura para gerenciamento das informações de Checkout (Viagens) | 1d | 2019-07-02 A | 2019-07-03 | 40 | 1d | 0d | Guilherme Miari | 8h |
| 42 | 1.2.2 | **Front-End** | 18d | 2019-06-18 A | 2019-07-12 |  | 18d | 0d |  | 128h |
| 43 | 1.2.2.1 | Criar Tela Principal App (Viagens) | 2d | 2019-06-18 A | 2019-06-20 | 13, 28 | 2d | 0d | Dirceu Belém | 16h |
| 44 | 1.2.2.2 | Criar Tela Listagem Passagens (Viagem) | 2d | 2019-06-20 A | 2019-06-24 | 43 | 2d | 0d | Dirceu Belém | 16h |
| 45 | 1.2.2.3 | Criar Tela Listagem de Pacotes (Viagem) | 2d | 2019-06-26 A | 2019-06-28 | 44, 37 | 2d | 0d | Dirceu Belém | 16h |
| 46 | 1.2.2.4 | Criar Tela Listagem de Hotéis (Viagem) | 2d | 2019-06-28 A | 2019-07-02 | 45 | 2d | 0d | Dirceu Belém | 16h |
| 47 | 1.2.2.5 | Criar Tela Carrinho (Viagem) | 4d | 2019-07-02 A | 2019-07-08 | 46 | 4d | 0d | Dirceu Belém | 32h |
| 48 | 1.2.2.6 | Criar Tela Transição Carrinho/Checkout (Viagem) | 2d | 2019-07-08 A | 2019-07-10 | 47 | 2d | 0d | Dirceu Belém | 16h |
| 49 | 1.2.2.7 | Criar Tela Checkout (Viagem) | 2d | 2019-07-10 A | 2019-07-12 | 48 | 2d | 0d | Dirceu Belém | 16h |
| 50 | 1.3 | **SPRINT 7** | 16.25d | 2019-07-12 A | 2019-08-05 |  | 16.25d | 0d |  | 130h |
| 51 | 1.3.1 | **Front-End** | 4.25d | 2019-07-12 A | 2019-07-18 |  | 4.25d | 0d |  | 34h |
| 52 | 1.3.1.1 | Criar Tela Visualização Dados Pessoais Usuário | 1d | 2019-07-12 A | 2019-07-15 | 49 | 1d | 0d | Dirceu Belém | 8h |
| 53 | 1.3.1.2 | Criar Tela Visualização/Cadastro/Edição Endereço | 1d | 2019-07-15 A | 2019-07-16 | 52 | 1d | 0d | Dirceu Belém | 8h |
| 54 | 1.3.1.3 | Criar Tela Visualização Resgates | 1d | 2019-07-16 A | 2019-07-17 | 53 | 1d | 0d | Dirceu Belém | 8h |
| 55 | 1.3.1.4 | Cria Tela Termos de Uso | 4h | 2019-07-17 A | 2019-07-17 | 54 | 4h | 0d | Dirceu Belém | 4h |
| 56 | 1.3.1.5 | Criar Tela Condições Gerais de Produtos | 2h | 2019-07-17 A | 2019-07-18 | 55 | 2h | 0d | Dirceu Belém | 2h |
| 57 | 1.3.1.6 | Criar Tela Condições Gerais de Viagens | 2h | 2019-07-18 A | 2019-07-18 | 56 | 2h | 0d | Dirceu Belém | 2h |
| 58 | 1.3.1.7 | Criar Tela Regulamento | 2h | 2019-07-18 A | 2019-07-18 | 57 | 2h | 0d | Dirceu Belém | 2h |

| ID | WBS | Task | Duration | Start | Finish | Predecessors | Remaining | Total slack | Resources | Work |
| --- | --- | --- | --- | --- | --- | --- | --- | --- | --- | --- |
| 59 | 1.3.2 | **Homologação** | 11d | 2019-07-18 A | 2019-08-02 |  | 11d | 0d |  | 88h |
| 60 | 1.3.2.1 | **Testes UAT** | 7d | 2019-07-18 A | 2019-07-29 |  | 7d | 0d |  | 56h |
| 61 | 1.3.2.1.1 | Testar em Smartphone IOS | 14h | 2019-07-18 A | 2019-07-22 | 58 | 14h | 0d | Flávio Machado | 14h |
| 62 | 1.3.2.1.2 | Testar em Smartphone Android | 14h | 2019-07-22 A | 2019-07-24 | 61 | 14h | 0d | Lucas Moreira | 14h |
| 63 | 1.3.2.1.3 | Testar em Tablets IOS | 14h | 2019-07-24 A | 2019-07-25 | 62 | 14h | 0d | Flávio Machado | 14h |
| 64 | 1.3.2.1.4 | Testar em Tablets Android | 14h | 2019-07-25 A | 2019-07-29 | 63 | 14h | 0d | Lucas Moreira | 14h |
| 65 | 1.3.2.2 | Realizar Correções Identificadas no Back-End | 2d | 2019-07-29 A | 2019-07-31 | 64 | 2d | 0d | Guilherme Miari | 16h |
| 66 | 1.3.2.3 | Realizar Correções Identificadas no Front-End | 2d | 2019-07-31 A | 2019-08-02 | 65 | 2d | 0d | Dirceu Belém | 16h |
| 67 | 1.3.3 | **Implantação** | 1d | 2019-08-02 A | 2019-08-05 |  | 1d | 0d |  | 8h |
| 68 | 1.3.3.1 | **Comitê CSU** | 0.75d | 2019-08-02 A | 2019-08-05 |  | 0.75d | 0d |  | 6h |
| 69 | 1.3.3.1.1 | Agendar Reunião de Comitê de Implantação | 1h | 2019-08-02 A | 2019-08-02 | 66 | 1h | 0d | Isabela Oliveira | 1h |
| 70 | 1.3.3.1.2 | Realizar Reunião com Comitê de Implantação | 4h | 2019-08-02 A | 2019-08-05 | 69 | 4h | 0d | Isabela Oliveira | 4h |
| 71 | 1.3.3.1.3 | Solicitar Aprovações da Implantação | 1h | 2019-08-05 A | 2019-08-05 | 70 | 1h | 0d | Isabela Oliveira | 1h |
| 72 | 1.3.3.2 | **App** | 0.25d | 2019-08-05 A | 2019-08-05 |  | 0.25d | 0d |  | 2h |
| 73 | 1.3.3.2.1 | Publicar Aplicativo na Google Play | 1h | 2019-08-05 A | 2019-08-05 | 71 | 1h | 0d | Marcus Melo | 1h |
| 74 | 1.3.3.2.2 | Publicar Aplicativo na Apple Store | 1h | 2019-08-05 A | 2019-08-05 | 73 | 1h | 0d | Marcus Melo | 1h |
